# 4. Crear el equipo del proyecto integrando la información sobre los recursos en el plan del proyecto (hoja de recursos)

Schedule from MS Project, 2013-03-22 to 2014-03-05, status date 2013-03-22.

## Calendars

- Estándar: Mon-Fri 09:00-13:00, 15:00-19:00; Sat-Sun off.

## Resources

| Resource | Rate |
| --- | --- |
| DIRECTOR PROYECTO | 60 |
| INGENIERO AGRONOMO | 48 |
| EXPERTO GIS | 47 |
| ECONOMISTA | 45 |
| SOCIOLOGO | 45 |
| INGENIERO EN MEDIOAMBIENTE | 45 |
| ADMINISTRATIVO | 30 |
| TECNICOS DE APOYO | 35 |

## Schedule

| ID | WBS | Task | Type | Duration | Start | Finish | Predecessors |
| --- | --- | --- | --- | --- | --- | --- | --- |
| 1 | 1 | **TOTAL PROYECTO** |  | 242d | 2013-03-22 | 2014-02-24 |  |
| 2 | 1.1 | **FASE 1ª PREPARACION PARA LA FORMULACION** |  | 31d | 2013-03-22 | 2013-05-03 |  |
| 3 | 1.1.1 | INICIO | milestone, manual | 0d | 2013-03-22 | 2013-03-22 |  |
| 4 | 1.1.2 | TERMINOS DE REFERENCIA. Objetivos. Condicionantes del Promotor | manual | 10d | 2013-04-01 | 2013-04-12 | 3 |
| 5 | 1.1.3 | FINANCIACION | manual | 7d | 2013-04-01 | 2013-04-09 | 3 |
| 6 | 1.1.4 | COMITÉ DE COORDINACION. Constitución y organización | manual | 5d | 2013-04-01 | 2013-04-05 | 3 |
| 7 | 1.1.5 | EQUIPO DE FORMULACION. Recursos humanos y técnicos | manual | 15d | 2013-04-08 | 2013-04-26 | 4SS, 6 |
| 8 | 1.1.6 | METODOLOGIA Y PLAN DE TRABAJO | manual | 10d | 2013-04-22 | 2013-05-03 | 7FS-5d, 5, 4, 6SS |
| 9 | 1.1.7 | DOC. Nº1: Fin P.F. | manual | 5d | 2013-05-06 | 2013-05-10 | 8 |
| 10 | 1.1.8 | Entrega al PROMOTOR. Doc. nº1 | milestone, manual | 0d | 2013-05-13 | 2013-05-13 | 9 |
| 11 | 1.1.9 | SEMINARIO DE LANZAMIENTO DEL PROYECTO | manual | 1d | 2013-05-13 | 2013-05-13 | 10 |
| 12 | 1.2 | **FASE 2: ANALISIS Y DIAGNOSTICO** |  | 94d | 2013-03-22 | 2013-07-31 |  |
| 13 | 1.2.1 | **ANALISIS ANTECEDENTES** |  | 15d | 2013-05-14 | 2013-06-03 | 11 |
| 14 | 1.2.1.1 | POLITICAS Y PROGRAMAS | manual | 10d | 2013-05-14 | 2013-05-27 | 11 |
| 15 | 1.2.1.2 | MARCO LEGAL | manual | 15d | 2013-05-14 | 2013-06-03 | 11 |
| 16 | 1.2.1.3 | BASES DE DATOS EXISTENTES | manual | 7d | 2013-05-14 | 2013-05-22 | 11 |
| 17 | 1.2.2 | **ANALISIS DEL AREA DEL PROYECTO** |  | 80d | 2013-05-23 | 2013-09-11 | 11, 16 |
| 18 | 1.2.2.1 | ANALISIS DE RECURSOS NATURALES. INVENTARIO AMBIENTAL | manual | 35d | 2013-03-31 | 2013-05-16 |  |
| 19 | 1.2.2.2 | INFRAESTRUCTURAS Y SERVICIOS | manual | 20d | 2013-05-17 | 2013-06-13 | 18 |
| 20 | 1.2.2.3 | ANALISIS DE SECTORES PRODUCTIVOS | manual | 25d | 2013-06-14 | 2013-07-18 | 14, 13, 15, 19 |
| 21 | 1.2.2.4 | ANALISIS POBLACIONAL | manual | 20d | 2013-05-23 | 2013-06-19 |  |
| 22 | 1.2.2.5 | SISTEMA GENERAL TERRITORIAL DE INFORMACION | manual | 21d | 2013-05-23 | 2013-06-20 | 16 |
| 23 | 1.2.3 | **ANALISIS DE AGENTES Y PARTICIPACION** |  | 82d | 2013-03-22 | 2013-07-15 |  |
| 24 | 1.2.3.1 | IDENTIFICACIÓN DE AGENTES Y TIPOLOGIA | manual | 10d | 2013-05-30 | 2013-06-12 | 22SS+5d |
| 25 | 1.2.3.2 | ANALISIS DE LA PARTICIPACIÓN: ENCUESTA CON LOS AGENTES | manual | 60d | 2013-06-13 | 2013-09-04 | 24 |
| 26 | 1.2.3.3 | TALLER DE PARTICIPACIÓN AGENTES PUBLICOS | manual | 1d | 2013-06-06 | 2013-06-06 | 22SS+10d |
| 27 | 1.2.3.4 | ANALISIS PROSPECTIVO SIN | manual | 6d | 2013-06-07 | 2013-06-14 | 26 |
| 28 | 1.2.3.5 | INFORME DE PARTICIPACION: Problemas, necesidades, oportunidades | manual | 10d | 2013-09-05 | 2013-09-18 | 27, 25 |
| 29 | 1.2.3.6 | PRESENTACIÓN Y VALIDACION DE CONCLUSIONES | manual | 2d | 2013-09-19 | 2013-09-20 | 28 |
| 30 | 1.2.3.7 | CONCLUSIONES Y Doc. Nº2. Presentación al PROMOTOR | milestone, manual | 0d | 2013-09-23 | 2013-09-23 | 29 |
| 31 | 1.2.3.8 | Doc. nº2. REVISIÓN POR EL PROMOTOR | milestone, manual | 0d | 2013-09-23 | 2013-09-23 | 29, 30 |

| ID | WBS | Task | Type | Duration | Start | Finish | Predecessors |
| --- | --- | --- | --- | --- | --- | --- | --- |
| 32 | 1.3 | **FASE 3: DISEÑO DEL PROYECTO** |  | 92d | 2013-03-22 | 2013-07-29 |  |
| 33 | 1.3.1 | OBJETIVOS Y METAS | manual | 1d | 2013-09-23 | 2013-09-23 | 31 |
| 34 | 1.3.2 | ALTERNATIVA ESTRATEGICAS: ANÁLISIS Y SELECCIÓN | manual | 7d | 2013-09-24 | 2013-10-02 | 33 |
| 35 | 1.3.3 | FORMULACION DE LOS COMPONENTES | manual | 60d | 2013-10-03 | 2013-12-25 | 34 |
| 36 | 1.3.4 | DISEÑO DE LA ORGANIZACIÓN | manual | 10d | 2013-12-26 | 2014-01-08 | 35 |
| 37 | 1.3.5 | SISTEMA DE SEGUIMIENTO Y EVALUACION. Programación de la ejecución. | manual | 7d | 2013-12-26 | 2014-01-03 | 26, 35 |
| 38 | 1.3.6 | PRESUPUESTACION | manual | 4d | 2014-01-09 | 2014-01-14 | 35, 36 |
| 39 | 1.3.7 | Doc. Nº 3. Entrega al PROMOTOR | milestone, manual | 0d | 2014-01-15 | 2014-01-15 | 38 |
| 40 | 1.3.8 | Doc. Nº 3. REVISION POR EL PROMOTOR | manual | 10d | 2014-01-15 | 2014-01-28 | 39 |
| 41 | 1.4 | **FASE 4: EVALUACION MULTICRITERIO** |  | 15d | 2013-03-22 | 2013-04-11 |  |
| 42 | 1.4.1 | EVALUACION ECONOMICO-FINANCIERA | manual | 10d | 2014-01-29 | 2014-02-11 | 40 |
| 43 | 1.4.2 | EVALUACION SOCIAL Y CULTURAL | manual | 10d | 2014-01-29 | 2014-02-11 | 40 |
| 44 | 1.4.3 | EVALUACION AMBIENTAL | manual | 10d | 2014-01-29 | 2014-02-11 | 40 |
| 45 | 1.4.4 | EVALUACION DE RIESGOS, SEGURIDAD Y SALUD DEL PROYECTO | manual | 10d | 2014-01-29 | 2014-02-11 | 40 |
| 46 | 1.4.5 | Entrega Doc. nº 4. VIABILIDAD Y SOSTENIBLIDAD | milestone, manual | 0d | 2014-02-12 | 2014-02-12 | 45 |
| 47 | 1.4.6 | Revisión Doc. nº 4 | manual | 5d | 2014-02-12 | 2014-02-18 | 42, 43, 44 |
| 48 | 1.5 | **FASE 5: DOCUMENTACION** |  | 15d | 2013-03-22 | 2013-04-11 |  |
| 49 | 1.5.1 | MEMORIA | manual | 6d | 2014-02-19 | 2014-02-26 | 47 |
| 50 | 1.5.2 | ANEJOS A LA MEMORIA | manual | 10d | 2014-02-19 | 2014-03-04 | 47 |
| 51 | 1.5.3 | PLANOS | manual | 10d | 2014-02-19 | 2014-03-04 | 47 |
| 52 | 1.5.4 | PLIEGO DE CONDICIONES | manual | 3d | 2014-02-19 | 2014-02-21 | 47 |
| 53 | 1.5.5 | PRESUPUESTO | manual | 3d | 2014-02-19 | 2014-02-21 | 47 |
| 54 | 1.5.6 | ESTUDIO DE SEGURIDAD Y SALUD | manual | 10d | 2014-02-19 | 2014-03-04 | 47 |
| 55 | 1.5.7 | Entrega del proyecto | milestone, manual | 0d | 2014-03-05 | 2014-03-05 | 51, 49, 50, 52, 53, 54 |
