# 5. Asignar los recursos a las tareas una vez integrada la información sobre los recursos en el proyecto (Herramientas-asignar recursos)

Schedule from MS Project, 2013-03-22 to 2014-03-28, status date 2013-03-22, costs in €.

## Calendars

- Estándar: Mon-Fri 09:00-13:00, 15:00-19:00; Sat-Sun off.

## Resources

| Resource | Rate |
| --- | --- |
| DIRECTOR PROYECTO | 60 |
| INGENIERO AGRONOMO | 48 |
| EXPERTO GIS | 47 |
| ECONOMISTA | 45 |
| SOCIOLOGO | 45 |
| INGENIERO EN MEDIOAMBIENTE | 45 |
| ADMINISTRATIVO | 30 |
| TECNICOS DE APOYO | 35 |

## Schedule

| ID | WBS | Task | Type | Duration | Start | Finish | Predecessors | Resources | Work | Cost |
| --- | --- | --- | --- | --- | --- | --- | --- | --- | --- | --- |
| 1 | 1 | **TOTAL PROYECTO** |  | 242d | 2013-03-22 | 2014-02-24 |  |  | 4672h | 213,842.8 |
| 2 | 1.1 | **FASE 1ª PREPARACION PARA LA FORMULACION** |  | 31d | 2013-03-22 | 2013-05-03 |  |  | 536.4h | 25,242 |
| 3 | 1.1.1 | INICIO | milestone, manual | 0d | 2013-03-22 | 2013-03-22 |  | DIRECTOR PROYECTO |  |  |
| 4 | 1.1.2 | TERMINOS DE REFERENCIA. Objetivos. Condicionantes del Promotor | manual | 10d | 2013-04-01 | 2013-04-12 | 3 | DIRECTOR PROYECTO [25%]; ECONOMISTA [50%]; INGENIERO AGRONOMO [25%]; SOCIOLOGO [25%]; INGENIERO EN MEDIOAMBIENTE [25%] | 120h | 5,760 |
| 5 | 1.1.3 | FINANCIACION | manual | 7d | 2013-04-01 | 2013-04-09 | 3 | DIRECTOR PROYECTO [15%]; ECONOMISTA [50%]; INGENIERO AGRONOMO [25%]; SOCIOLOGO [25%] | 64.4h | 3,066 |
| 6 | 1.1.4 | COMITÉ DE COORDINACION. Constitución y organización | manual | 5d | 2013-04-01 | 2013-04-05 | 3 | DIRECTOR PROYECTO [25%] | 10h | 600 |
| 7 | 1.1.5 | EQUIPO DE FORMULACION. Recursos humanos y técnicos | manual | 17d | 2013-04-08 | 2013-04-30 | 4SS, 6 | ADMINISTRATIVO [10%]; DIRECTOR PROYECTO [25%]; ECONOMISTA [20%]; INGENIERO AGRONOMO [10%]; INGENIERO EN MEDIOAMBIENTE [10%]; SOCIOLOGO [10%] | 102h | 4,896 |
| 8 | 1.1.6 | METODOLOGIA Y PLAN DE TRABAJO | manual | 10d | 2013-04-22 | 2013-05-03 | 7FS-5d, 5, 4, 6SS | ADMINISTRATIVO [50%]; DIRECTOR PROYECTO [50%]; ECONOMISTA [50%]; INGENIERO AGRONOMO [50%]; INGENIERO EN MEDIOAMBIENTE [50%]; SOCIOLOGO [50%] | 240h | 10,920 |
| 9 | 1.1.7 | DOC. Nº1: Fin P.F. | milestone, manual | 0d | 2013-05-06 | 2013-05-06 | 8 | ADMINISTRATIVO; DIRECTOR PROYECTO [50%]; ECONOMISTA [50%]; INGENIERO AGRONOMO [20%]; INGENIERO EN MEDIOAMBIENTE [20%]; SOCIOLOGO [20%] |  |  |
| 10 | 1.1.8 | Entrega al PROMOTOR. Doc. nº1 | milestone, manual | 0d | 2013-05-13 | 2013-05-13 | 9 | DIRECTOR PROYECTO [50%] |  |  |
| 11 | 1.1.9 | SEMINARIO DE LANZAMIENTO DEL PROYECTO | milestone, manual | 0d | 2013-05-13 | 2013-05-13 | 10 | ADMINISTRATIVO; DIRECTOR PROYECTO; ECONOMISTA; INGENIERO AGRONOMO; INGENIERO EN MEDIOAMBIENTE; SOCIOLOGO |  |  |
| 12 | 1.2 | **FASE 2: ANALISIS Y DIAGNOSTICO** |  | 94d | 2013-03-22 | 2013-07-31 |  |  | 2258h | 102,308.8 |
| 13 | 1.2.1 | **ANALISIS ANTECEDENTES** |  | 15d | 2013-05-14 | 2013-06-03 | 11 |  | 315.2h | 14,088 |
| 14 | 1.2.1.1 | POLITICAS Y PROGRAMAS | manual | 17d | 2013-05-14 | 2013-06-05 | 11 | ADMINISTRATIVO [20%]; DIRECTOR PROYECTO [20%]; ECONOMISTA [40%]; INGENIERO AGRONOMO [50%]; INGENIERO EN MEDIOAMBIENTE [20%] | 120h | 5,520 |
| 15 | 1.2.1.2 | MARCO LEGAL | manual | 15d | 2013-05-14 | 2013-06-03 | 11 | ADMINISTRATIVO [50%]; DIRECTOR PROYECTO [20%]; ECONOMISTA [40%]; INGENIERO AGRONOMO [20%] | 156h | 6,552 |
| 16 | 1.2.1.3 | BASES DE DATOS EXISTENTES | manual | 7d | 2013-05-14 | 2013-05-22 | 11 | DIRECTOR PROYECTO [20%]; INGENIERO AGRONOMO [50%] | 39.2h | 2,016 |
| 17 | 1.2.2 | **ANALISIS DEL AREA DEL PROYECTO** |  | 80d | 2013-05-23 | 2013-09-11 | 11, 16 |  | 988h | 42,376 |
| 18 | 1.2.2.1 | ANALISIS DE RECURSOS NATURALES. INVENTARIO AMBIENTAL | manual | 63d | 2013-03-31 | 2013-07-04 |  | ADMINISTRATIVO [20%]; ECONOMISTA [40%]; EXPERTO GIS [50%]; INGENIERO AGRONOMO [50%]; INGENIERO EN MEDIOAMBIENTE | 448h | 20,020 |
| 19 | 1.2.2.2 | INFRAESTRUCTURAS Y SERVICIOS | manual | 24d | 2013-05-17 | 2013-06-19 | 18 | ADMINISTRATIVO [25%]; DIRECTOR PROYECTO [10%]; INGENIERO AGRONOMO; SOCIOLOGO [50%] | 136h | 5,760 |
| 20 | 1.2.2.3 | ANALISIS DE SECTORES PRODUCTIVOS | manual | 40d | 2013-06-14 | 2013-08-08 | 14, 13, 15, 19 | ADMINISTRATIVO [50%]; DIRECTOR PROYECTO [20%]; ECONOMISTA; INGENIERO AGRONOMO [50%] | 240h | 10,200 |
| 21 | 1.2.2.4 | ANALISIS POBLACIONAL | manual | 20d | 2013-05-23 | 2013-06-19 |  | ADMINISTRATIVO [25%]; INGENIERO AGRONOMO [25%]; SOCIOLOGO | 80h | 3,120 |
| 22 | 1.2.2.5 | SISTEMA GENERAL TERRITORIAL DE INFORMACION | manual | 24d | 2013-05-23 | 2013-06-25 | 16 | ADMINISTRATIVO [25%]; EXPERTO GIS; INGENIERO AGRONOMO [25%]; SOCIOLOGO | 84h | 3,276 |
| 23 | 1.2.3 | **ANALISIS DE AGENTES Y PARTICIPACION** |  | 82d | 2013-03-22 | 2013-07-15 |  |  | 954.8h | 45,844.8 |
| 24 | 1.2.3.1 | IDENTIFICACIÓN DE AGENTES Y TIPOLOGIA | manual | 15d | 2013-05-30 | 2013-06-19 | 22SS+5d | ADMINISTRATIVO [25%]; DIRECTOR PROYECTO [50%]; INGENIERO AGRONOMO [50%]; SOCIOLOGO | 100h | 4,920 |
| 25 | 1.2.3.2 | ANALISIS DE LA PARTICIPACIÓN: ENCUESTA CON LOS AGENTES | manual | 66d | 2013-06-13 | 2013-09-12 | 24 | ADMINISTRATIVO [25%]; DIRECTOR PROYECTO [50%]; INGENIERO AGRONOMO [50%]; SOCIOLOGO | 600h | 29,520 |
| 26 | 1.2.3.3 | TALLER DE PARTICIPACIÓN AGENTES PUBLICOS | manual | 2d | 2013-06-06 | 2013-06-20 | 22SS+10d | ADMINISTRATIVO [50%]; DIRECTOR PROYECTO [15%]; INGENIERO AGRONOMO [50%]; SOCIOLOGO | 9.2h | 384 |
| 27 | 1.2.3.4 | ANALISIS PROSPECTIVO SIN | manual | 6d | 2013-06-07 | 2013-06-14 | 26 | DIRECTOR PROYECTO [15%]; ECONOMISTA [50%]; INGENIERO AGRONOMO [25%]; INGENIERO EN MEDIOAMBIENTE [25%]; SOCIOLOGO [25%] | 67.2h | 3,168 |
| 28 | 1.2.3.5 | INFORME DE PARTICIPACION: Problemas, necesidades, oportunidades | manual | 10d | 2013-09-05 | 2013-09-18 | 27, 25 | ADMINISTRATIVO [50%]; DIRECTOR PROYECTO [30%]; ECONOMISTA [50%]; INGENIERO AGRONOMO [25%]; INGENIERO EN MEDIOAMBIENTE [25%]; SOCIOLOGO [25%] | 164h | 7,200 |
| 29 | 1.2.3.6 | PRESENTACIÓN Y VALIDACION DE CONCLUSIONES | manual | 2d | 2013-09-19 | 2013-09-20 | 28 | ADMINISTRATIVO [25%]; DIRECTOR PROYECTO [25%]; ECONOMISTA [20%]; INGENIERO AGRONOMO [10%]; SOCIOLOGO [10%] | 14.4h | 652.8 |
| 30 | 1.2.3.7 | CONCLUSIONES Y Doc. Nº2. Presentación al PROMOTOR | milestone, manual | 0d | 2013-09-23 | 2013-09-23 | 29 | ADMINISTRATIVO; DIRECTOR PROYECTO [50%]; ECONOMISTA [50%]; INGENIERO AGRONOMO [25%]; INGENIERO EN MEDIOAMBIENTE [20%] |  |  |
| 31 | 1.2.3.8 | Doc. nº2. REVISIÓN POR EL PROMOTOR | milestone, manual | 0d | 2013-09-23 | 2013-09-23 | 29, 30 |  |  |  |

| ID | WBS | Task | Type | Duration | Start | Finish | Predecessors | Resources | Work | Cost |
| --- | --- | --- | --- | --- | --- | --- | --- | --- | --- | --- |
| 32 | 1.3 | **FASE 3: DISEÑO DEL PROYECTO** |  | 92d | 2013-03-22 | 2013-07-29 |  |  | 1028h | 47,652 |
| 33 | 1.3.1 | OBJETIVOS Y METAS | milestone, manual | 0d | 2013-09-23 | 2013-09-23 | 31 | DIRECTOR PROYECTO; INGENIERO AGRONOMO [50%] |  |  |
| 34 | 1.3.2 | ALTERNATIVA ESTRATEGICAS: ANÁLISIS Y SELECCIÓN | manual | 7d | 2013-09-24 | 2013-10-02 | 33 | DIRECTOR PROYECTO [50%]; ECONOMISTA; INGENIERO AGRONOMO; INGENIERO EN MEDIOAMBIENTE [50%] | 56h | 2,940 |
| 35 | 1.3.3 | FORMULACION DE LOS COMPONENTES | manual | 60d | 2013-10-03 | 2013-12-25 | 34 | ECONOMISTA [50%]; INGENIERO AGRONOMO [50%]; INGENIERO EN MEDIOAMBIENTE [50%] | 720h | 33,120 |
| 36 | 1.3.4 | DISEÑO DE LA ORGANIZACIÓN | manual | 10d | 2013-12-26 | 2014-01-08 | 35 | ECONOMISTA [50%]; INGENIERO AGRONOMO [50%]; INGENIERO EN MEDIOAMBIENTE [50%] | 120h | 5,520 |
| 37 | 1.3.5 | SISTEMA DE SEGUIMIENTO Y EVALUACION. Programación de la ejecución. | manual | 7d | 2013-12-26 | 2014-01-03 | 26, 35 | ECONOMISTA [50%]; INGENIERO AGRONOMO [50%]; INGENIERO EN MEDIOAMBIENTE [50%] | 84h | 3,864 |
| 38 | 1.3.6 | PRESUPUESTACION | manual | 4d | 2014-01-09 | 2014-01-14 | 35, 36 | ECONOMISTA [50%]; INGENIERO AGRONOMO [50%]; INGENIERO EN MEDIOAMBIENTE [50%] | 48h | 2,208 |
| 39 | 1.3.7 | Doc. Nº 3. Entrega al PROMOTOR | milestone, manual | 0d | 2014-01-15 | 2014-01-15 | 38 | DIRECTOR PROYECTO |  |  |
| 40 | 1.3.8 | Doc. Nº 3. REVISION POR EL PROMOTOR | manual | 10d | 2014-01-15 | 2014-01-28 | 39 |  |  |  |
| 41 | 1.4 | **FASE 4: EVALUACION MULTICRITERIO** |  | 15d | 2013-03-22 | 2013-04-11 |  |  | 276h | 13,980 |
| 42 | 1.4.1 | EVALUACION ECONOMICO-FINANCIERA | manual | 10d | 2014-01-29 | 2014-02-11 | 40 | DIRECTOR PROYECTO [25%]; ECONOMISTA [50%]; INGENIERO AGRONOMO | 60h | 3,000 |
| 43 | 1.4.2 | EVALUACION SOCIAL Y CULTURAL | manual | 10d | 2014-01-29 | 2014-02-11 | 40 | DIRECTOR PROYECTO [25%]; ECONOMISTA [15%]; INGENIERO AGRONOMO [50%]; SOCIOLOGO | 72h | 3,660 |
| 44 | 1.4.3 | EVALUACION AMBIENTAL | manual | 10d | 2014-01-29 | 2014-02-11 | 40 | DIRECTOR PROYECTO [25%]; ECONOMISTA [15%]; INGENIERO AGRONOMO [50%]; INGENIERO EN MEDIOAMBIENTE | 72h | 3,660 |
| 45 | 1.4.4 | EVALUACION DE RIESGOS, SEGURIDAD Y SALUD DEL PROYECTO | manual | 20d | 2014-01-29 | 2014-02-28 | 40 | DIRECTOR PROYECTO [25%]; ECONOMISTA [15%]; INGENIERO AGRONOMO [50%]; TECNICOS DE APOYO | 72h | 3,660 |
| 46 | 1.4.5 | Entrega Doc. nº 4. VIABILIDAD Y SOSTENIBLIDAD | milestone, manual | 0d | 2014-02-12 | 2014-02-12 | 45 |  |  |  |
| 47 | 1.4.6 | Revisión Doc. nº 4 | manual | 5d | 2014-02-12 | 2014-02-18 | 42, 43, 44 |  |  |  |
| 48 | 1.5 | **FASE 5: DOCUMENTACION** |  | 15d | 2013-03-22 | 2013-04-11 |  |  | 573.6h | 24,660 |
| 49 | 1.5.1 | MEMORIA | manual | 9d | 2014-02-19 | 2014-03-03 | 47 | DIRECTOR PROYECTO [10%]; ECONOMISTA [25%]; INGENIERO AGRONOMO [50%]; TECNICOS DE APOYO | 40.8h | 1,980 |
| 50 | 1.5.2 | ANEJOS A LA MEMORIA | manual | 22d | 2014-02-19 | 2014-03-28 | 47 | ADMINISTRATIVO [50%]; DIRECTOR PROYECTO [10%]; ECONOMISTA [25%]; INGENIERO AGRONOMO [50%]; INGENIERO EN MEDIOAMBIENTE [50%]; TECNICOS DE APOYO | 148h | 6,300 |
| 51 | 1.5.3 | PLANOS | manual | 19d | 2014-02-19 | 2014-03-17 | 47 | ADMINISTRATIVO [50%]; DIRECTOR PROYECTO [10%]; ECONOMISTA [25%]; INGENIERO AGRONOMO [50%]; INGENIERO EN MEDIOAMBIENTE [50%]; TECNICOS DE APOYO | 148h | 6,300 |
| 52 | 1.5.4 | PLIEGO DE CONDICIONES | manual | 3d | 2014-02-19 | 2014-02-21 | 47 | ADMINISTRATIVO [50%]; DIRECTOR PROYECTO [10%]; ECONOMISTA [25%]; INGENIERO AGRONOMO [50%]; INGENIERO EN MEDIOAMBIENTE [50%]; TECNICOS DE APOYO | 44.4h | 1,890 |
| 53 | 1.5.5 | PRESUPUESTO | manual | 3d | 2014-02-19 | 2014-02-21 | 47 | ADMINISTRATIVO [50%]; DIRECTOR PROYECTO [10%]; ECONOMISTA [25%]; INGENIERO AGRONOMO [50%]; INGENIERO EN MEDIOAMBIENTE [50%]; TECNICOS DE APOYO | 44.4h | 1,890 |
| 54 | 1.5.6 | ESTUDIO DE SEGURIDAD Y SALUD | manual | 23d | 2014-02-19 | 2014-03-21 | 47 | ADMINISTRATIVO [50%]; DIRECTOR PROYECTO [10%]; ECONOMISTA [25%]; INGENIERO AGRONOMO [50%]; INGENIERO EN MEDIOAMBIENTE [50%]; TECNICOS DE APOYO | 148h | 6,300 |
| 55 | 1.5.7 | Entrega del proyecto | milestone, manual | 0d | 2014-03-05 | 2014-03-05 | 51, 49, 50, 52, 53, 54 |  |  |  |
