# 8

Schedule from MS Project, 2013-03-22 to 2014-02-24, status date 2013-03-22, costs in €.

## Calendars

- Estándar: Mon-Fri 09:00-13:00, 15:00-19:00; Sat-Sun off.

## Resources

| Resource | Rate |
| --- | --- |
| DIRECTOR PROYECTO | 60 |
| INGENIERO AGRONOMO | 48 |
| EXPERTO GIS | 47 |
| ECONOMISTA | 45 |
| SOCIOLOGO | 45 |
| INGENIERO EN MEDIOAMBIENTE | 45 |
| ADMINISTRATIVO | 30 |
| TECNICOS DE APOYO | 35 |

## Schedule

| ID | WBS | Task | Type | Duration | Start | Finish | Predecessors | Resources | Work | Cost |
| --- | --- | --- | --- | --- | --- | --- | --- | --- | --- | --- |
| 1 | 1 | **TOTAL PROYECTO** |  | 242d | 2013-03-22 | 2014-02-24 |  |  | 3555.7h | 164,249.9 |
| 2 | 1.1 | **FASE 1ª PREPARACION PARA LA FORMULACION** |  | 31d | 2013-03-22 | 2013-05-03 |  |  | 537.2h | 25,338 |
| 3 | 1.1.1 | INICIO | milestone, manual | 0d | 2013-03-22 | 2013-03-22 |  | DIRECTOR PROYECTO |  |  |
| 4 | 1.1.2 | TERMINOS DE REFERENCIA. Objetivos. Condicionantes del Promotor | manual | 10d | 2013-03-22 | 2013-04-04 | 3 | DIRECTOR PROYECTO [25%]; ECONOMISTA [50%]; INGENIERO AGRONOMO [25%]; SOCIOLOGO [25%]; INGENIERO EN MEDIOAMBIENTE [25%] | 120h | 5,760 |
| 5 | 1.1.3 | FINANCIACION | manual | 7d | 2013-03-22 | 2013-04-01 | 3 | DIRECTOR PROYECTO [15%]; ECONOMISTA [50%]; INGENIERO AGRONOMO [25%]; SOCIOLOGO [25%] | 64.4h | 3,066 |
| 6 | 1.1.4 | COMITÉ DE COORDINACION. Constitución y organización | manual | 5d | 2013-03-22 | 2013-03-28 | 3 | DIRECTOR PROYECTO [25%] | 10h | 600 |
| 7 | 1.1.5 | EQUIPO DE FORMULACION. Recursos humanos y técnicos | manual | 15d | 2013-03-29 | 2013-04-18 | 6, 5SS | ADMINISTRATIVO [10%]; DIRECTOR PROYECTO [25%]; ECONOMISTA [20%]; INGENIERO AGRONOMO [10%]; INGENIERO EN MEDIOAMBIENTE [10%]; SOCIOLOGO [10%] | 98.8h | 4,752 |
| 8 | 1.1.6 | METODOLOGIA Y PLAN DE TRABAJO | manual | 10d | 2013-04-15 | 2013-04-26 | 7FS-5d, 5, 4, 6SS | ADMINISTRATIVO [50%]; DIRECTOR PROYECTO [50%]; ECONOMISTA [50%]; INGENIERO AGRONOMO [50%]; INGENIERO EN MEDIOAMBIENTE [50%]; SOCIOLOGO [50%] | 240h | 10,920 |
| 9 | 1.1.7 | DOC. Nº1: Fin P.F. | milestone, manual | 0d | 2013-04-29 | 2013-04-29 | 8 | ADMINISTRATIVO; DIRECTOR PROYECTO [50%]; ECONOMISTA [50%]; INGENIERO AGRONOMO [20%]; INGENIERO EN MEDIOAMBIENTE [20%]; SOCIOLOGO [20%] |  |  |
| 10 | 1.1.8 | Entrega al PROMOTOR. Doc. nº1 | manual | 1d | 2013-05-06 | 2013-05-06 | 9 | DIRECTOR PROYECTO [50%] | 4h | 240 |
| 11 | 1.1.9 | SEMINARIO DE LANZAMIENTO DEL PROYECTO | milestone, manual | 0d | 2013-05-07 | 2013-05-07 | 10 | ADMINISTRATIVO; DIRECTOR PROYECTO; ECONOMISTA; INGENIERO AGRONOMO; INGENIERO EN MEDIOAMBIENTE; SOCIOLOGO |  |  |
| 12 | 1.2 | **FASE 2: ANALISIS Y DIAGNOSTICO** |  | 94d | 2013-03-22 | 2013-07-31 |  |  | 1984.5h | 90,077.9 |
| 13 | 1.2.1 | **ANALISIS ANTECEDENTES** |  | 15d | 2013-05-08 | 2013-05-28 | 11 |  | 282.4h | 12,513.6 |
| 14 | 1.2.1.1 | POLITICAS Y PROGRAMAS | manual | 10d | 2013-05-08 | 2013-05-21 | 11 | ADMINISTRATIVO [20%]; DIRECTOR PROYECTO [20%]; ECONOMISTA [40%]; INGENIERO AGRONOMO [50%]; INGENIERO EN MEDIOAMBIENTE [20%] | 92h | 4,176 |
| 15 | 1.2.1.2 | MARCO LEGAL | manual | 15d | 2013-05-08 | 2013-05-28 | 11 | ADMINISTRATIVO [50%]; DIRECTOR PROYECTO [20%]; ECONOMISTA [40%]; INGENIERO AGRONOMO [20%] | 151.2h | 6,321.6 |
| 16 | 1.2.1.3 | BASES DE DATOS EXISTENTES | manual | 7d | 2013-05-08 | 2013-05-16 | 11 | DIRECTOR PROYECTO [20%]; INGENIERO AGRONOMO [50%] | 39.2h | 2,016 |
| 17 | 1.2.2 | **ANALISIS DEL AREA DEL PROYECTO** |  | 80d | 2013-05-17 | 2013-09-05 | 16, 11 |  | 803.3h | 34,263.5 |
| 18 | 1.2.2.1 | ANALISIS DE RECURSOS NATURALES. INVENTARIO AMBIENTAL | manual | 35d | 2013-05-17 | 2013-07-04 |  | ADMINISTRATIVO [20%]; ECONOMISTA [40%]; EXPERTO GIS [50%]; INGENIERO AGRONOMO [50%]; INGENIERO EN MEDIOAMBIENTE | 349.3h | 15,531.5 |
| 19 | 1.2.2.2 | INFRAESTRUCTURAS Y SERVICIOS | manual | 20d | 2013-07-05 | 2013-08-01 | 18 | ADMINISTRATIVO [25%]; DIRECTOR PROYECTO [10%]; INGENIERO AGRONOMO; SOCIOLOGO [50%] | 128h | 5,520 |
| 20 | 1.2.2.3 | ANALISIS DE SECTORES PRODUCTIVOS | manual | 25d | 2013-08-02 | 2013-09-05 | 14, 13, 15, 19 | ADMINISTRATIVO [50%]; DIRECTOR PROYECTO [20%]; ECONOMISTA; INGENIERO AGRONOMO [50%] | 180h | 7,608 |
| 21 | 1.2.2.4 | ANALISIS POBLACIONAL | manual | 20d | 2013-05-17 | 2013-06-13 |  | ADMINISTRATIVO [25%]; INGENIERO AGRONOMO [25%]; SOCIOLOGO | 80h | 3,120 |
| 22 | 1.2.2.5 | SISTEMA GENERAL TERRITORIAL DE INFORMACION | manual | 22d | 2013-05-17 | 2013-06-17 | 16 | ADMINISTRATIVO [25%]; EXPERTO GIS; INGENIERO AGRONOMO [25%]; SOCIOLOGO | 66h | 2,484 |
| 23 | 1.2.3 | **ANALISIS DE AGENTES Y PARTICIPACION** |  | 82d | 2013-03-22 | 2013-07-15 |  |  | 898.8h | 43,300.8 |
| 24 | 1.2.3.1 | IDENTIFICACIÓN DE AGENTES Y TIPOLOGIA | manual | 10d | 2013-05-24 | 2013-06-06 | 22SS+5d | ADMINISTRATIVO [25%]; DIRECTOR PROYECTO [50%]; INGENIERO AGRONOMO [50%]; SOCIOLOGO | 80h | 3,960 |
| 25 | 1.2.3.2 | ANALISIS DE LA PARTICIPACIÓN: ENCUESTA CON LOS AGENTES | manual | 60d | 2013-06-07 | 2013-08-29 | 24 | ADMINISTRATIVO [25%]; DIRECTOR PROYECTO [50%]; INGENIERO AGRONOMO [50%]; SOCIOLOGO | 576h | 28,368 |
| 26 | 1.2.3.3 | TALLER DE PARTICIPACIÓN AGENTES PUBLICOS | manual | 1d | 2013-06-21 | 2013-06-21 | 25SS+10d, 22SS+10d | ADMINISTRATIVO [50%]; DIRECTOR PROYECTO [15%]; INGENIERO AGRONOMO [50%]; SOCIOLOGO | 5.2h | 192 |
| 27 | 1.2.3.4 | ANALISIS PROSPECTIVO SIN | manual | 6d | 2013-06-24 | 2013-07-01 | 26 | DIRECTOR PROYECTO [15%]; ECONOMISTA [50%]; INGENIERO AGRONOMO [25%]; INGENIERO EN MEDIOAMBIENTE [25%]; SOCIOLOGO [25%] | 67.2h | 3,168 |
| 28 | 1.2.3.5 | INFORME DE PARTICIPACION: Problemas, necesidades, oportunidades | manual | 10d | 2013-08-30 | 2013-09-12 | 27, 25 | ADMINISTRATIVO [50%]; DIRECTOR PROYECTO [30%]; ECONOMISTA [50%]; INGENIERO AGRONOMO [25%]; INGENIERO EN MEDIOAMBIENTE [25%]; SOCIOLOGO [25%] | 156h | 6,960 |
| 29 | 1.2.3.6 | PRESENTACIÓN Y VALIDACION DE CONCLUSIONES | manual | 2d | 2013-09-13 | 2013-09-16 | 28 | ADMINISTRATIVO [25%]; DIRECTOR PROYECTO [25%]; ECONOMISTA [20%]; INGENIERO AGRONOMO [10%]; SOCIOLOGO [10%] | 14.4h | 652.8 |
| 30 | 1.2.3.7 | CONCLUSIONES Y Doc. Nº2. Presentación al PROMOTOR | milestone, manual | 0d | 2013-09-17 | 2013-09-17 | 29 | ADMINISTRATIVO; DIRECTOR PROYECTO [50%]; ECONOMISTA [50%]; INGENIERO AGRONOMO [25%]; INGENIERO EN MEDIOAMBIENTE [20%] |  |  |
| 31 | 1.2.3.8 | Doc. nº2. REVISIÓN POR EL PROMOTOR | manual | 1d | 2013-09-18 | 2013-09-18 | 30, 29 |  |  |  |

| ID | WBS | Task | Type | Duration | Start | Finish | Predecessors | Resources | Work | Cost |
| --- | --- | --- | --- | --- | --- | --- | --- | --- | --- | --- |
| 32 | 1.3 | **FASE 3: DISEÑO DEL PROYECTO** |  | 92d | 2013-03-22 | 2013-07-29 |  |  | 764h | 35,508 |
| 33 | 1.3.1 | OBJETIVOS Y METAS | milestone, manual | 0d | 2013-09-19 | 2013-09-19 | 31 | DIRECTOR PROYECTO; INGENIERO AGRONOMO [50%] |  |  |
| 34 | 1.3.2 | ALTERNATIVA ESTRATEGICAS: ANÁLISIS Y SELECCIÓN | manual | 7d | 2013-09-20 | 2013-09-30 | 33 | DIRECTOR PROYECTO [50%]; ECONOMISTA; INGENIERO AGRONOMO; INGENIERO EN MEDIOAMBIENTE [50%] | 56h | 2,940 |
| 35 | 1.3.3 | FORMULACION DE LOS COMPONENTES | manual | 40d | 2013-10-31 | 2013-12-25 | 34 | ECONOMISTA [50%]; INGENIERO AGRONOMO [50%]; INGENIERO EN MEDIOAMBIENTE [50%] | 480h | 22,080 |
| 36 | 1.3.4 | DISEÑO DE LA ORGANIZACIÓN | manual | 10d | 2013-12-26 | 2014-01-08 | 35 | ECONOMISTA [50%]; INGENIERO AGRONOMO [50%]; INGENIERO EN MEDIOAMBIENTE [50%] | 104h | 4,776 |
| 37 | 1.3.5 | SISTEMA DE SEGUIMIENTO Y EVALUACION. Programación de la ejecución. | manual | 7d | 2013-12-26 | 2014-01-03 | 35, 26 | ECONOMISTA [50%]; INGENIERO AGRONOMO [50%]; INGENIERO EN MEDIOAMBIENTE [50%] | 84h | 3,864 |
| 38 | 1.3.6 | PRESUPUESTACION | manual | 4d | 2014-01-09 | 2014-01-14 | 36, 35 | ECONOMISTA [50%]; INGENIERO AGRONOMO [50%]; INGENIERO EN MEDIOAMBIENTE [50%] | 40h | 1,848 |
| 39 | 1.3.7 | Doc. Nº 3. Entrega al PROMOTOR | milestone, manual | 0d | 2014-01-15 | 2014-01-15 | 38 | DIRECTOR PROYECTO |  |  |
| 40 | 1.3.8 | Doc. Nº 3. REVISION POR EL PROMOTOR | manual | 6d | 2014-01-16 | 2014-01-23 | 39 |  |  |  |
| 41 | 1.4 | **FASE 4: EVALUACION MULTICRITERIO** |  | 15d | 2013-03-22 | 2013-04-11 |  |  | 129.2h | 7,086 |
| 42 | 1.4.1 | EVALUACION ECONOMICO-FINANCIERA | manual | 10d | 2014-01-24 | 2014-02-06 | 40 | DIRECTOR PROYECTO [25%]; ECONOMISTA [50%]; INGENIERO AGRONOMO | 32h | 1,740 |
| 43 | 1.4.2 | EVALUACION SOCIAL Y CULTURAL | manual | 10d | 2014-01-24 | 2014-02-06 | 40 | DIRECTOR PROYECTO [25%]; ECONOMISTA [15%]; INGENIERO AGRONOMO [50%]; SOCIOLOGO | 30.4h | 1,692 |
| 44 | 1.4.3 | EVALUACION AMBIENTAL | manual | 10d | 2014-01-24 | 2014-02-06 | 40 | DIRECTOR PROYECTO [25%]; ECONOMISTA [15%]; INGENIERO AGRONOMO [50%]; INGENIERO EN MEDIOAMBIENTE | 39.6h | 2,130 |
| 45 | 1.4.4 | EVALUACION DE RIESGOS, SEGURIDAD Y SALUD DEL PROYECTO | manual | 10d | 2014-01-24 | 2014-02-06 | 40 | DIRECTOR PROYECTO [25%]; ECONOMISTA [15%]; INGENIERO AGRONOMO [50%]; TECNICOS DE APOYO | 27.2h | 1,524 |
| 46 | 1.4.5 | Entrega Doc. nº 4. VIABILIDAD Y SOSTENIBLIDAD | milestone, manual | 0d | 2014-02-07 | 2014-02-07 | 45, 42, 43, 44 |  |  |  |
| 47 | 1.4.6 | Revisión Doc. nº 4 | manual | 5d | 2014-02-10 | 2014-02-14 | 46, 42, 43, 44 |  |  |  |
| 48 | 1.5 | **FASE 5: DOCUMENTACION** |  | 10d | 2013-03-22 | 2013-04-04 |  |  | 140.8h | 6,240 |
| 49 | 1.5.1 | MEMORIA | manual | 5d | 2014-02-17 | 2014-02-21 | 47 | DIRECTOR PROYECTO [10%]; ECONOMISTA [25%]; INGENIERO AGRONOMO [50%]; TECNICOS DE APOYO | 8h | 420 |
| 50 | 1.5.2 | ANEJOS A LA MEMORIA | manual | 5d | 2014-02-17 | 2014-02-21 | 47 | ADMINISTRATIVO [50%]; DIRECTOR PROYECTO [10%]; ECONOMISTA [25%]; INGENIERO AGRONOMO [50%]; INGENIERO EN MEDIOAMBIENTE [50%]; TECNICOS DE APOYO | 28h | 1,200 |
| 51 | 1.5.3 | PLANOS | manual | 5d | 2014-02-17 | 2014-02-21 | 47 | ADMINISTRATIVO [50%]; DIRECTOR PROYECTO [10%]; ECONOMISTA [25%]; INGENIERO AGRONOMO [50%]; INGENIERO EN MEDIOAMBIENTE [50%]; TECNICOS DE APOYO | 6h | 330 |
| 52 | 1.5.4 | PLIEGO DE CONDICIONES | manual | 3d | 2014-02-17 | 2014-02-19 | 47 | ADMINISTRATIVO [50%]; DIRECTOR PROYECTO [10%]; ECONOMISTA [25%]; INGENIERO AGRONOMO [50%]; INGENIERO EN MEDIOAMBIENTE [50%]; TECNICOS DE APOYO | 44.4h | 1,890 |
| 53 | 1.5.5 | PRESUPUESTO | manual | 3d | 2014-02-17 | 2014-02-19 | 47 | ADMINISTRATIVO [50%]; DIRECTOR PROYECTO [10%]; ECONOMISTA [25%]; INGENIERO AGRONOMO [50%]; INGENIERO EN MEDIOAMBIENTE [50%]; TECNICOS DE APOYO | 44.4h | 1,890 |
| 54 | 1.5.6 | ESTUDIO DE SEGURIDAD Y SALUD | manual | 5d | 2014-02-17 | 2014-02-21 | 47 | ADMINISTRATIVO [50%]; DIRECTOR PROYECTO [10%]; ECONOMISTA [25%]; INGENIERO AGRONOMO [50%]; INGENIERO EN MEDIOAMBIENTE [50%]; TECNICOS DE APOYO | 10h | 510 |
| 55 | 1.5.7 | Entrega del proyecto | manual | 1d | 2014-02-24 | 2014-02-24 | 51, 49, 50, 52, 53, 54 |  |  |  |
