# 9. Optimizar el plan del proyecto para los recursos

Schedule from MS Project, 2013-03-22 to 2014-02-24, status date 2013-03-22, costs in €.

## Calendars

- Estándar: Mon-Fri 09:00-13:00, 15:00-19:00; Sat-Sun off.

## Resources

| Resource | Rate |
| --- | --- |
| DIRECTOR PROYECTO | 60 |
| INGENIERO AGRONOMO | 48 |
| EXPERTO GIS | 47 |
| ECONOMISTA | 45 |
| SOCIOLOGO | 45 |
| INGENIERO EN MEDIOAMBIENTE | 45 |
| ADMINISTRATIVO | 30 |
| TECNICOS DE APOYO | 35 |

## Schedule

| ID | WBS | Task | Type | Duration | Start | Finish | Predecessors | Resources | Work | Cost |
| --- | --- | --- | --- | --- | --- | --- | --- | --- | --- | --- |
| 1 | 1 | **TOTAL PROYECTO** |  | 242d | 2013-03-22 | 2014-02-24 |  |  | 2642h | 117,690 |
| 2 | 1.1 | **FASE 1ª PREPARACION PARA LA FORMULACION** |  | 31d | 2013-03-22 | 2013-05-03 |  |  | 299.2h | 13,578 |
| 3 | 1.1.1 | INICIO | milestone, manual | 0d | 2013-03-22 | 2013-03-22 |  | DIRECTOR PROYECTO |  |  |
| 4 | 1.1.2 | TERMINOS DE REFERENCIA. Objetivos. Condicionantes del Promotor | manual | 10d | 2013-03-22 | 2013-04-04 | 3 | DIRECTOR PROYECTO [25%]; ECONOMISTA [50%]; INGENIERO AGRONOMO [25%]; INGENIERO EN MEDIOAMBIENTE [25%]; SOCIOLOGO [25%] | 118h | 5,640 |
| 5 | 1.1.3 | FINANCIACION | manual | 7d | 2013-03-22 | 2013-04-01 | 3 | DIRECTOR PROYECTO [15%]; ECONOMISTA [50%]; INGENIERO AGRONOMO [25%]; SOCIOLOGO [25%] | 63.2h | 2,994 |
| 6 | 1.1.4 | COMITÉ DE COORDINACION. Constitución y organización | manual | 5d | 2013-03-25 | 2013-03-29 | 3 | DIRECTOR PROYECTO [25%] | 10h | 600 |
| 7 | 1.1.5 | EQUIPO DE FORMULACION. Recursos humanos y técnicos | manual | 10d | 2013-04-01 | 2013-04-12 | 6, 5SS | ADMINISTRATIVO [10%]; DIRECTOR PROYECTO [25%]; ECONOMISTA [20%]; INGENIERO AGRONOMO [10%]; INGENIERO EN MEDIOAMBIENTE [10%]; SOCIOLOGO [10%] | 12h | 420 |
| 8 | 1.1.6 | METODOLOGIA Y PLAN DE TRABAJO | manual | 10d | 2013-04-15 | 2013-04-26 | 7FS-5d, 5, 4, 6SS | ADMINISTRATIVO [50%]; DIRECTOR PROYECTO [50%]; ECONOMISTA [50%]; INGENIERO AGRONOMO [50%]; INGENIERO EN MEDIOAMBIENTE [50%]; SOCIOLOGO [50%] | 92h | 3,684 |
| 9 | 1.1.7 | DOC. Nº1: Fin P.F. | milestone, manual | 0d | 2013-04-29 | 2013-04-29 | 8 | ADMINISTRATIVO; DIRECTOR PROYECTO [50%]; ECONOMISTA [50%]; INGENIERO AGRONOMO [20%]; INGENIERO EN MEDIOAMBIENTE [20%]; SOCIOLOGO [20%] |  |  |
| 10 | 1.1.8 | Entrega al PROMOTOR. Doc. nº1 | manual | 1d | 2013-05-06 | 2013-05-06 | 9 | DIRECTOR PROYECTO [50%] | 4h | 240 |
| 11 | 1.1.9 | SEMINARIO DE LANZAMIENTO DEL PROYECTO | milestone, manual | 0d | 2013-05-07 | 2013-05-07 | 10 | ADMINISTRATIVO; DIRECTOR PROYECTO; ECONOMISTA; INGENIERO AGRONOMO; INGENIERO EN MEDIOAMBIENTE; SOCIOLOGO |  |  |
| 12 | 1.2 | **FASE 2: ANALISIS Y DIAGNOSTICO** |  | 94d | 2013-03-22 | 2013-07-31 |  |  | 1483.6h | 66,700 |
| 13 | 1.2.1 | **ANALISIS ANTECEDENTES** |  | 15d | 2013-05-08 | 2013-05-28 | 11 |  | 95.2h | 3,552 |
| 14 | 1.2.1.1 | POLITICAS Y PROGRAMAS | manual | 10d | 2013-05-08 | 2013-05-21 | 11 | ADMINISTRATIVO [20%]; DIRECTOR PROYECTO [20%]; ECONOMISTA [40%]; INGENIERO AGRONOMO [50%]; INGENIERO EN MEDIOAMBIENTE [20%] | 25.6h | 912 |
| 15 | 1.2.1.2 | MARCO LEGAL | manual | 10d | 2013-05-08 | 2013-05-27 | 11 | ADMINISTRATIVO [50%]; DIRECTOR PROYECTO [20%]; ECONOMISTA [40%]; INGENIERO AGRONOMO [20%] | 40h | 1,200 |
| 16 | 1.2.1.3 | BASES DE DATOS EXISTENTES | manual | 7d | 2013-05-08 | 2013-05-16 | 11 | DIRECTOR PROYECTO [20%]; INGENIERO AGRONOMO [50%] | 29.6h | 1,440 |
| 17 | 1.2.2 | **ANALISIS DEL AREA DEL PROYECTO** |  | 80d | 2013-05-17 | 2013-09-05 | 16 |  | 1165.2h | 51,856 |
| 18 | 1.2.2.1 | ANALISIS DE RECURSOS NATURALES. INVENTARIO AMBIENTAL | manual | 35d | 2013-05-17 | 2013-07-04 |  | ADMINISTRATIVO [20%]; ECONOMISTA [40%]; EXPERTO GIS [50%]; INGENIERO AGRONOMO [50%]; INGENIERO EN MEDIOAMBIENTE | 456h | 20,572 |
| 19 | 1.2.2.2 | INFRAESTRUCTURAS Y SERVICIOS | manual | 20d | 2013-07-05 | 2013-08-08 | 18 | ADMINISTRATIVO [25%]; DIRECTOR PROYECTO [10%]; INGENIERO AGRONOMO; SOCIOLOGO [50%] | 114.8h | 5,220 |
| 20 | 1.2.2.3 | ANALISIS DE SECTORES PRODUCTIVOS | manual | 20d | 2013-08-09 | 2013-09-05 | 14, 13, 15, 19 | ADMINISTRATIVO [50%]; DIRECTOR PROYECTO [20%]; ECONOMISTA; INGENIERO AGRONOMO [50%] | 178.4h | 7,824 |
| 21 | 1.2.2.4 | ANALISIS POBLACIONAL | manual | 20d | 2013-05-17 | 2013-06-13 |  | ADMINISTRATIVO [25%]; INGENIERO AGRONOMO [25%]; SOCIOLOGO | 240h | 10,320 |
| 22 | 1.2.2.5 | SISTEMA GENERAL TERRITORIAL DE INFORMACION | manual | 22d | 2013-05-17 | 2013-08-14 | 16 | ADMINISTRATIVO [25%]; EXPERTO GIS; INGENIERO AGRONOMO [25%]; SOCIOLOGO | 176h | 7,920 |
| 23 | 1.2.3 | **ANALISIS DE AGENTES Y PARTICIPACION** |  | 82d | 2013-03-22 | 2013-07-15 |  |  | 223.2h | 11,292 |
| 24 | 1.2.3.1 | IDENTIFICACIÓN DE AGENTES Y TIPOLOGIA | manual | 10d | 2013-05-24 | 2013-06-07 | 22SS+5d | ADMINISTRATIVO [25%]; DIRECTOR PROYECTO [50%]; INGENIERO AGRONOMO [50%]; SOCIOLOGO | 48h | 2,760 |
| 25 | 1.2.3.2 | ANALISIS DE LA PARTICIPACIÓN: ENCUESTA CON LOS AGENTES | manual | 20d | 2013-06-10 | 2013-07-05 | 24 | ADMINISTRATIVO [25%]; DIRECTOR PROYECTO [50%]; INGENIERO AGRONOMO [50%]; SOCIOLOGO | 102h | 5,124 |
| 26 | 1.2.3.3 | TALLER DE PARTICIPACIÓN AGENTES PUBLICOS | manual | 1d | 2013-06-24 | 2013-06-24 | 25SS+10d | ADMINISTRATIVO [50%]; DIRECTOR PROYECTO [15%]; INGENIERO AGRONOMO [50%]; SOCIOLOGO | 1.2h | 72 |
| 27 | 1.2.3.4 | ANALISIS PROSPECTIVO SIN | manual | 10d | 2013-06-28 | 2013-07-23 | 26 | DIRECTOR PROYECTO [15%]; ECONOMISTA [50%]; INGENIERO AGRONOMO [25%]; INGENIERO EN MEDIOAMBIENTE [25%]; SOCIOLOGO [25%] | 48.8h | 2,292 |
| 28 | 1.2.3.5 | INFORME DE PARTICIPACION: Problemas, necesidades, oportunidades | manual | 10d | 2013-08-30 | 2013-09-12 | 27, 25 | ADMINISTRATIVO [50%]; DIRECTOR PROYECTO [30%]; ECONOMISTA [50%]; INGENIERO AGRONOMO [25%]; INGENIERO EN MEDIOAMBIENTE [25%]; SOCIOLOGO [25%] | 20h | 900 |
| 29 | 1.2.3.6 | PRESENTACIÓN Y VALIDACION DE CONCLUSIONES | manual | 2d | 2013-09-13 | 2013-09-16 | 28 | ADMINISTRATIVO [25%]; DIRECTOR PROYECTO [25%]; ECONOMISTA [20%]; INGENIERO AGRONOMO [10%]; SOCIOLOGO [10%] | 3.2h | 144 |
| 30 | 1.2.3.7 | CONCLUSIONES Y Doc. Nº2. Presentación al PROMOTOR | milestone, manual | 0d | 2013-09-17 | 2013-09-17 | 29 | ADMINISTRATIVO; DIRECTOR PROYECTO [50%]; ECONOMISTA [50%]; INGENIERO AGRONOMO [25%]; INGENIERO EN MEDIOAMBIENTE [20%] |  |  |
| 31 | 1.2.3.8 | Doc. nº2. REVISIÓN POR EL PROMOTOR | manual | 1d | 2013-09-18 | 2013-09-18 | 30 |  |  |  |

| ID | WBS | Task | Type | Duration | Start | Finish | Predecessors | Resources | Work | Cost |
| --- | --- | --- | --- | --- | --- | --- | --- | --- | --- | --- |
| 32 | 1.3 | **FASE 3: DISEÑO DEL PROYECTO** |  | 92d | 2013-03-22 | 2013-07-29 |  |  | 560h | 25,440 |
| 33 | 1.3.1 | OBJETIVOS Y METAS | milestone, manual | 0d | 2013-09-19 | 2013-09-19 | 31 | DIRECTOR PROYECTO; INGENIERO AGRONOMO [50%] |  |  |
| 34 | 1.3.2 | ALTERNATIVA ESTRATEGICAS: ANÁLISIS Y SELECCIÓN | manual | 7d | 2013-09-20 | 2013-09-30 | 33 | DIRECTOR PROYECTO [50%]; ECONOMISTA; INGENIERO AGRONOMO; INGENIERO EN MEDIOAMBIENTE [50%] | 28h | 1,260 |
| 35 | 1.3.3 | FORMULACION DE LOS COMPONENTES | manual | 40d | 2013-10-31 | 2013-12-25 | 34 | ECONOMISTA [50%]; INGENIERO AGRONOMO [50%]; INGENIERO EN MEDIOAMBIENTE [50%] | 364h | 16,620 |
| 36 | 1.3.4 | DISEÑO DE LA ORGANIZACIÓN | manual | 10d | 2013-12-26 | 2014-01-08 | 35 | ECONOMISTA [50%]; INGENIERO AGRONOMO [50%]; INGENIERO EN MEDIOAMBIENTE [50%] | 80h | 3,600 |
| 37 | 1.3.5 | SISTEMA DE SEGUIMIENTO Y EVALUACION. Programación de la ejecución. | manual | 7d | 2013-12-26 | 2014-01-03 | 35 | ECONOMISTA [50%]; INGENIERO AGRONOMO [50%]; INGENIERO EN MEDIOAMBIENTE [50%] | 56h | 2,520 |
| 38 | 1.3.6 | PRESUPUESTACION | manual | 4d | 2014-01-09 | 2014-01-14 | 36 | ECONOMISTA [50%]; INGENIERO AGRONOMO [50%]; INGENIERO EN MEDIOAMBIENTE [50%] | 32h | 1,440 |
| 39 | 1.3.7 | Doc. Nº 3. Entrega al PROMOTOR | milestone, manual | 0d | 2014-01-15 | 2014-01-15 | 38 | DIRECTOR PROYECTO |  |  |
| 40 | 1.3.8 | Doc. Nº 3. REVISION POR EL PROMOTOR | manual | 6d | 2014-01-16 | 2014-01-23 | 39 |  |  |  |
| 41 | 1.4 | **FASE 4: EVALUACION MULTICRITERIO** |  | 15d | 2013-03-22 | 2013-04-11 |  |  | 134.8h | 5,926 |
| 42 | 1.4.1 | EVALUACION ECONOMICO-FINANCIERA | manual | 10d | 2014-01-24 | 2014-02-06 | 40 | DIRECTOR PROYECTO [25%]; ECONOMISTA; INGENIERO AGRONOMO [50%]; SOCIOLOGO | 20h | 1,200 |
| 43 | 1.4.2 | EVALUACION SOCIAL Y CULTURAL | manual | 10d | 2014-01-24 | 2014-02-06 | 40 | DIRECTOR PROYECTO [25%]; ECONOMISTA [15%]; INGENIERO AGRONOMO [50%]; SOCIOLOGO | 20h | 1,200 |
| 44 | 1.4.3 | EVALUACION AMBIENTAL | manual | 10d | 2014-01-24 | 2014-02-06 | 40 | DIRECTOR PROYECTO [25%]; ECONOMISTA [15%]; INGENIERO AGRONOMO [50%]; INGENIERO EN MEDIOAMBIENTE | 14.8h | 726 |
| 45 | 1.4.4 | EVALUACION DE RIESGOS, SEGURIDAD Y SALUD DEL PROYECTO | manual | 10d | 2014-01-24 | 2014-02-06 | 40 | DIRECTOR PROYECTO [25%]; ECONOMISTA [15%]; INGENIERO AGRONOMO [50%]; TECNICOS DE APOYO | 80h | 2,800 |
| 46 | 1.4.5 | Entrega Doc. nº 4. VIABILIDAD Y SOSTENIBLIDAD | milestone, manual | 0d | 2014-02-07 | 2014-02-07 | 45 |  |  |  |
| 47 | 1.4.6 | Revisión Doc. nº 4 | manual | 5d | 2014-02-10 | 2014-02-14 | 46 |  |  |  |
| 48 | 1.5 | **FASE 5: DOCUMENTACION** |  | 10d | 2013-03-22 | 2013-04-04 |  |  | 164.4h | 6,046 |
| 49 | 1.5.1 | MEMORIA | manual | 5d | 2014-02-17 | 2014-02-21 | 47 | DIRECTOR PROYECTO [10%]; ECONOMISTA [25%]; INGENIERO AGRONOMO [50%]; TECNICOS DE APOYO | 40h | 1,400 |
| 50 | 1.5.2 | ANEJOS A LA MEMORIA | manual | 5d | 2014-02-17 | 2014-02-21 | 47 | ADMINISTRATIVO [50%]; DIRECTOR PROYECTO [10%]; ECONOMISTA [25%]; INGENIERO AGRONOMO [50%]; INGENIERO EN MEDIOAMBIENTE [50%]; TECNICOS DE APOYO | 72h | 2,540 |
| 51 | 1.5.3 | PLANOS | manual | 5d | 2014-02-17 | 2014-02-21 | 47 | ADMINISTRATIVO [50%]; DIRECTOR PROYECTO [10%]; ECONOMISTA [25%]; INGENIERO AGRONOMO [50%]; INGENIERO EN MEDIOAMBIENTE [50%]; TECNICOS DE APOYO | 20h | 600 |
| 52 | 1.5.4 | PLIEGO DE CONDICIONES | manual | 3d | 2014-02-17 | 2014-02-20 | 47 | ADMINISTRATIVO [50%]; DIRECTOR PROYECTO [10%]; ECONOMISTA [25%]; INGENIERO AGRONOMO [50%]; INGENIERO EN MEDIOAMBIENTE [50%]; TECNICOS DE APOYO | 18.8h | 870 |
| 53 | 1.5.5 | PRESUPUESTO | manual | 3d | 2014-02-17 | 2014-02-19 | 47 | ADMINISTRATIVO [50%]; DIRECTOR PROYECTO [10%]; ECONOMISTA [25%]; INGENIERO AGRONOMO [50%]; INGENIERO EN MEDIOAMBIENTE [50%]; TECNICOS DE APOYO | 5.6h | 276 |
| 54 | 1.5.6 | ESTUDIO DE SEGURIDAD Y SALUD | manual | 2d | 2014-02-19 | 2014-02-21 | 47 | ADMINISTRATIVO [50%]; DIRECTOR PROYECTO [10%]; ECONOMISTA [25%]; INGENIERO AGRONOMO [50%]; INGENIERO EN MEDIOAMBIENTE [50%]; TECNICOS DE APOYO | 8h | 360 |
| 55 | 1.5.7 | Entrega del proyecto | manual | 1d | 2014-02-24 | 2014-02-24 | 51, 49, 50, 52, 53, 54 |  |  |  |
